# Cronograma Villadent - Sistema web de agendamiento y recordatorio de citas

How a schedule from MS Project XML changed from version to version. A marks actual dates.

## Version 1 (saved 2026-11-19)

Note of the change: Merge pull request #3 from jesusdleal06/docs/institutional-template-and-schedule

| ID | WBS | Task | Duration | Start | Finish | Predecessors |
| --- | --- | --- | --- | --- | --- | --- |
| 1 | 1 | **Planificación de requisitos (fase RAD 1)** | 9d | 2026-09-03 | 2026-09-15 |  |
| 2 |  | Levantamiento de requisitos con Villadent (auxiliar y odontóloga) | 3d | 2026-09-03 | 2026-09-07 |  |
| 3 |  | Especificación de requisitos (SRS): RF01 a RF10 y RNF01 a RNF05 | 4d | 2026-09-08 | 2026-09-11 | 2 |
| 4 |  | Modelado de casos de uso CU-01 a CU-10 | 4d | 2026-09-08 | 2026-09-11 | 2 |
| 5 |  | Validación del SRS con Villadent | 2d | 2026-09-14 | 2026-09-15 | 3, 4 |
| 6 | 2 | **Diseño con el usuario (fase RAD 2)** | 11d | 2026-09-16 | 2026-09-30 |  |
| 7 |  | Arquitectura: Angular, Spring Boot hexagonal y PostgreSQL; despliegue en Vercel, Render y Neon | 3d | 2026-09-16 | 2026-09-18 | 5 |
| 8 |  | Modelo de datos: odontólogos, procedimientos, horarios, pacientes, citas y personal | 4d | 2026-09-16 | 2026-09-21 | 5 |
| 9 |  | Plan de pruebas (ISO/IEC/IEEE 29119-3) | 4d | 2026-09-16 | 2026-09-21 | 5 |
| 10 |  | Prototipo Angular del flujo público de agendamiento y de la agenda del personal | 5d | 2026-09-22 | 2026-09-28 | 7, 8 |
| 11 |  | Validación del prototipo con la auxiliar y la odontóloga | 2d | 2026-09-29 | 2026-09-30 | 9, 10 |
| 12 | 3 | **Construcción por ciclos de timeboxing (fase RAD 3)** | 30d | 2026-10-01 | 2026-11-11 |  |
| 13 |  | Entorno de desarrollo: Docker Compose, PostgreSQL y migraciones Flyway | 3d | 2026-10-01 | 2026-10-05 | 11 |
| 14 |  | Ciclo 1: acceso por rol, datos del paciente, disponibilidad y agendas por odontólogo (RF09, RF02, RF01, RF03) con sus pruebas | 8d | 2026-10-06 | 2026-10-15 | 13 |
| 15 |  | Ciclo 2: duración por procedimiento, agendamiento del paciente y agenda centralizada (RF04, RF07, RF08) con sus pruebas | 5d | 2026-10-16 | 2026-10-22 | 14 |
| 16 |  | Ciclo 3: recordatorios por WhatsApp y confirmación, cancelación y reprogramación (RF05, RF06) con sus pruebas | 6d | 2026-10-23 | 2026-10-30 | 15 |
| 17 |  | Ciclo 4: reportes administrativos (RF10) con sus pruebas | 4d | 2026-11-02 | 2026-11-05 | 16 |
| 18 |  | Integración del frontend con la API | 4d | 2026-11-06 | 2026-11-11 | 17 |
| 19 | 4 | **Pruebas y transición (fase RAD 4)** | 6d | 2026-11-12 | 2026-11-19 |  |
| 20 |  | Pruebas de sistema y no funcionales (RNF01 a RNF04) | 3d | 2026-11-12 | 2026-11-16 | 18 |
| 21 |  | Pruebas de aceptación con la auxiliar y la odontóloga (UAT y piloto) | 2d | 2026-11-12 | 2026-11-13 | 18 |
| 22 |  | Corrección de defectos y regresión | 2d | 2026-11-17 | 2026-11-18 | 20, 21 |
| 23 |  | Despliegue en Vercel, Render y Neon e informe de resultados | 1d | 2026-11-19 | 2026-11-19 | 22 |
| 24 |  | Entrega final del proyecto | 0d | 2026-11-19 | 2026-11-19 | 23 |

## Version 2 (saved 2026-11-19)

Note of the change: docs: update the project schedule and rename its ProjectLibre file

Last finish 2026-11-19 → 2026-11-26 (+7d).

Added:

| ID | Task | Duration | Start | Finish | Predecessors | Resources |
| --- | --- | --- | --- | --- | --- | --- |
| 7 | Criterios de aceptación (Dado que... cuando... entonces...) por requisito | 3d | 2026-09-15 | 2026-09-17 | 4 | Diego Andrés Becerra Bonilla (Project Manager / QA) [25%] |
| 8 | Validación de los requisitos con Villadent | 2d | 2026-09-18 | 2026-09-21 | 5, 6, 7 | Diego Andrés Becerra Bonilla (Project Manager / QA) [25%]; Auxiliar y odontóloga de Villadent (cliente) [25%] |
| 13 | Diseños de interfaz en Figma: flujo público de agendamiento y area del personal | 5d | 2026-09-22 | 2026-09-28 | 9 | Jesús David Leal Espinel (Frontend / UX) [25%] |
| 14 | Plan de pruebas (ISO/IEC/IEEE 29119-3) con casos por requisito | 5d | 2026-09-22 | 2026-09-28 | 9 | Diego Andrés Becerra Bonilla (Project Manager / QA) [25%] |
| 15 | Validación de los diseños con la auxiliar y la odontóloga | 2d | 2026-09-29 | 2026-09-30 | 13, 14 | Jesús David Leal Espinel (Frontend / UX) [25%]; Diego Andrés Becerra Bonilla (Project Manager / QA) [25%]; Auxiliar y odontóloga de Villadent (cliente) [25%] |
| 25 | Integración del frontend con la API: catálogos, disponibilidad, agendamiento y agenda | 8d | 2026-10-27 | 2026-11-05 | 21, 22 | Jesús David Leal Espinel (Frontend / UX) [25%] |
| 26 | Pantallas de gestión de la cita por enlace personal y de reportes integradas con la API | 3d | 2026-11-11 | 2026-11-13 | 24, 25 | Jesús David Leal Espinel (Frontend / UX) [25%] |
| 27 | Seguimiento de calidad de cada ciclo: ejecución de los casos del plan y registro de defectos | 20d | 2026-10-14 | 2026-11-10 | 21 | Diego Andrés Becerra Bonilla (Project Manager / QA) [25%] |
| 28 | Hito: agendamiento y recordatorios implementados | 0d | 2026-11-13 | 2026-11-13 | 26, 27 |  |
| 29 | **OE4. Desplegar el sistema en la nube con pruebas funcionales (fase RAD 4: transición)** | 8d | 2026-11-16 | 2026-11-26 |  |  |
| 30 | Pruebas de sistema y extremo a extremo con Playwright | 3d | 2026-11-16 | 2026-11-18 | 28 | Diego Andrés Becerra Bonilla (Project Manager / QA) [25%]; Jesús David Leal Espinel (Frontend / UX) [25%] |
| 31 | Pruebas no funcionales: rendimiento, seguridad OWASP y accesibilidad (RNF01 a RNF04) | 3d | 2026-11-16 | 2026-11-18 | 28 | Yenderson Josué Rangel Martínez (Backend / DevOps) [25%] |
| 32 | Despliegue en la nube: frontend en Vercel, API en Render y base de datos en Neon | 2d | 2026-11-19 | 2026-11-20 | 31 | Yenderson Josué Rangel Martínez (Backend / DevOps) [25%] |
| 33 | Pruebas de aceptación con la auxiliar y la odontóloga (UAT) y piloto con pacientes | 3d | 2026-11-23 | 2026-11-25 | 30, 32 | Diego Andrés Becerra Bonilla (Project Manager / QA) [25%]; Jesús David Leal Espinel (Frontend / UX) [25%]; Auxiliar y odontóloga de Villadent (cliente) [25%] |
| 34 | Corrección de defectos, regresión e informe de resultados | 1d | 2026-11-26 | 2026-11-26 | 33 | Yenderson Josué Rangel Martínez (Backend / DevOps) [25%]; Jesús David Leal Espinel (Frontend / UX) [25%]; Diego Andrés Becerra Bonilla (Project Manager / QA) [25%] |
| 35 | Hito: entrega final del proyecto | 0d | 2026-11-26 | 2026-11-26 | 34 |  |

Removed: 11 Validación del prototipo con la auxiliar y la odontóloga; 12 Construcción por ciclos de timeboxing (fase RAD 3); 19 Pruebas y transición (fase RAD 4); 20 Pruebas de sistema y no funcionales (RNF01 a RNF04); 22 Corrección de defectos y regresión

Changed:

| ID | Task | Start | Finish | Duration | Predecessors | Other |
| --- | --- | --- | --- | --- | --- | --- |
| 1 | **Villadent** |  | 2026-09-15 → 2026-11-26 (+72d) | 9d → 58d |  | was named Planificación de requisitos (fase RAD 1) |
| 2 | **OE1. Identificar los requerimientos funcionales y no funcionales (fase RAD 1: planificación de requisitos)** |  | 2026-09-07 → 2026-09-21 (+14d) | 3d → 13d |  | was named Levantamiento de requisitos con Villadent (auxiliar y odontóloga); resources Diego Andrés Becerra Bonilla; Yenderson Josué Rangel Martínez; Jesús David Leal Espinel → none |
| 3 | Entrevistas estructuradas con la auxiliar y la odontóloga de Villadent | 2026-09-08 → 2026-09-03 (-5d) | 2026-09-11 → 2026-09-07 (-4d) | 4d → 3d | 2 → none | was named Especificación de requisitos (SRS): RF01 a RF10 y RNF01 a RNF05; resources Diego Andrés Becerra Bonilla → Diego Andrés Becerra Bonilla (Project Manager / QA) [25%]; Yenderson Josué Rangel Martínez (Backend / DevOps) [25%]; Jesús David Leal Espinel (Frontend / UX) [25%]; Auxiliar y odontóloga de Villadent (cliente) [25%] |
| 4 | Especificación de requisitos RF01 a RF10 y RNF01 a RNF05 |  | 2026-09-11 → 2026-09-14 (+3d) | 4d → 5d | 2 → 3 | was named Modelado de casos de uso CU-01 a CU-10; resources Jesús David Leal Espinel; Diego Andrés Becerra Bonilla → Diego Andrés Becerra Bonilla (Project Manager / QA) [25%] |
| 5 | Casos de uso CU-01 a CU-10 y sus diagramas | 2026-09-14 → 2026-09-08 (-6d) | 2026-09-15 → 2026-09-14 (-1d) | 2d → 5d | 3, 4 → 3 | was named Validación del SRS con Villadent; resources Diego Andrés Becerra Bonilla → Jesús David Leal Espinel (Frontend / UX) [25%] |
| 6 | Estimación por puntos de función y registro de riesgos R-01 a R-04 | 2026-09-16 → 2026-09-08 (-8d) | 2026-09-30 → 2026-09-11 (-19d) | 11d → 4d | none → 3 | was named Diseño con el usuario (fase RAD 2); resources none → Yenderson Josué Rangel Martínez (Backend / DevOps) [25%] |
| 9 | Hito: requisitos aprobados por Villadent | 2026-09-16 → 2026-09-21 (+5d) |  | 4d → 0d | 5 → 8 | was named Plan de pruebas (ISO/IEC/IEEE 29119-3); resources Diego Andrés Becerra Bonilla → none |
| 10 | **OE2. Diseñar la arquitectura y el modelo de datos (fase RAD 2: diseño con el usuario)** |  | 2026-09-28 → 2026-10-01 (+3d) | 5d → 8d | 11, 12 → none | was named Prototipo Angular del flujo público de agendamiento y de la agenda del personal; resources Jesús David Leal Espinel → none |
| 11 | Arquitectura: Angular, Spring Boot hexagonal y PostgreSQL; despliegue en Vercel, Render y Neon | 2026-09-16 → 2026-09-22 (+6d) | 2026-09-18 → 2026-09-25 (+7d) | 3d → 4d | 5 → 9 | resources Jesús David Leal Espinel; Yenderson Josué Rangel Martínez → Yenderson Josué Rangel Martínez (Backend / DevOps) [25%] |
| 12 | Modelo de datos: odontólogos, procedimientos, horarios, pacientes, citas y personal | 2026-09-16 → 2026-09-28 (+12d) | 2026-09-21 → 2026-10-01 (+10d) |  | 5 → 11 | resources Yenderson Josué Rangel Martínez → Yenderson Josué Rangel Martínez (Backend / DevOps) [25%] |
| 16 | Hito: arquitectura, datos y diseños aprobados | 2026-10-23 → 2026-10-01 (-22d) | 2026-10-30 → 2026-10-01 (-29d) | 6d → 0d | 22 → 12, 15 | was named Ciclo 3: recordatorios por WhatsApp y confirmación, cancelación y reprogramación (RF05, RF06) con sus pruebas; resources Yenderson Josué Rangel Martínez; Jesús David Leal Espinel; Diego Andrés Becerra Bonilla → none |
| 17 | **OE3. Implementar el agendamiento en línea y los recordatorios por WhatsApp (fase RAD 3: construcción por ciclos de timeboxing)** | 2026-11-02 → 2026-10-02 (-31d) | 2026-11-05 → 2026-11-13 (+8d) | 4d → 29d | 16 → none | was named Ciclo 4: reportes administrativos (RF10) con sus pruebas; resources Yenderson Josué Rangel Martínez; Jesús David Leal Espinel; Diego Andrés Becerra Bonilla → none |
| 18 | Prototipo Angular con datos simulados: flujo público y agenda del personal | 2026-11-06 → 2026-10-02 (-35d) | 2026-11-11 → 2026-10-09 (-33d) | 4d → 6d | 17 → 16 | was named Integración del frontend con la API; resources Jesús David Leal Espinel; Yenderson Josué Rangel Martínez → Jesús David Leal Espinel (Frontend / UX) [25%] |
| 19 | Entorno de desarrollo: Docker Compose, PostgreSQL y migraciones Flyway | 2026-10-01 → 2026-10-02 (+1d) | 2026-10-05 → 2026-10-06 (+1d) |  | Validación del prototipo con la auxiliar y la odontóloga → 16 | resources Yenderson Josué Rangel Martínez → Yenderson Josué Rangel Martínez (Backend / DevOps) [25%] |
| 20 | Ciclo 1: acceso por rol, datos del paciente, disponibilidad y agendas por odontólogo (RF09, RF02, RF01, RF03) con sus pruebas | 2026-10-06 → 2026-10-07 (+1d) | 2026-10-15 → 2026-10-16 (+1d) |  |  | resources Yenderson Josué Rangel Martínez; Jesús David Leal Espinel; Diego Andrés Becerra Bonilla → Yenderson Josué Rangel Martínez (Backend / DevOps) [25%] |
| 21 | Validación del prototipo con Villadent y ajustes de accesibilidad | 2026-11-12 → 2026-10-12 (-31d) | 2026-11-13 → 2026-10-13 (-31d) |  |  | was named Pruebas de aceptación con la auxiliar y la odontóloga (UAT y piloto); resources Diego Andrés Becerra Bonilla; Jesús David Leal Espinel → Jesús David Leal Espinel (Frontend / UX) [25%]; Auxiliar y odontóloga de Villadent (cliente) [25%] |
| 22 | Ciclo 2: duración por procedimiento, agendamiento del paciente y agenda centralizada (RF04, RF07, RF08) con sus pruebas | 2026-10-16 → 2026-10-19 (+3d) | 2026-10-22 → 2026-10-26 (+4d) | 5d → 6d |  | resources Yenderson Josué Rangel Martínez; Jesús David Leal Espinel; Diego Andrés Becerra Bonilla → Yenderson Josué Rangel Martínez (Backend / DevOps) [25%] |
| 23 | Ciclo 3: recordatorios por WhatsApp con reintentos y enlace personal para confirmar, cancelar o reprogramar (RF05, RF06) con sus pruebas | 2026-11-19 → 2026-10-27 (-23d) | 2026-11-19 → 2026-11-04 (-15d) | 1d → 7d | Corrección de defectos y regresión → 22 | was named Despliegue en Vercel, Render y Neon e informe de resultados; resources Yenderson Josué Rangel Martínez; Diego Andrés Becerra Bonilla → Yenderson Josué Rangel Martínez (Backend / DevOps) [25%] |
| 24 | Ciclo 4: reportes administrativos con exportación CSV (RF10) con sus pruebas | 2026-11-19 → 2026-11-05 (-14d) | 2026-11-19 → 2026-11-10 (-9d) | 0d → 4d |  | was named Entrega final del proyecto; resources none → Yenderson Josué Rangel Martínez (Backend / DevOps) [25%] |
